# Mev15 - Parte 1

Schedule from GanttProject, 2014-06-02 to 2014-07-30.

## Calendars

- Project calendar: Mon-Fri working; Sat-Sun off.

## Resources

| Resource |
| --- |
| Filippo |
| Carmela |

## Schedule

| ID | WBS | Task | Duration | Start | Finish | Predecessors |
| --- | --- | --- | --- | --- | --- | --- |
| 1 | 1 | **Fissazione Udienza - Tipologia Rito** | 2d | 2014-06-02 | 2014-06-03 |  |
| 2 | 1.1 | UC.11.1 Fissazione udienza impostazione tipologia rito | 2d | 2014-06-02 | 2014-06-03 |  |
| 3 | 2 | **1 - Fissazione Udienza Rito Monocratico/Collegiale** | 6d | 2014-06-04 | 2014-06-11 | 1 |
| 4 | 2.1 | UC.11.1.1 Controllo obbligatorieta fissazione Udienza | 2d | 2014-06-04 | 2014-06-05 |  |
| 5 | 2.2 | UC.11.1.2 Inserimento Fissazione Udienza | 2d | 2014-06-06 | 2014-06-09 | 4 |
| 6 | 2.3 | UC.11.1.3 Validazione fissazione udienza | 2d | 2014-06-10 | 2014-06-11 | 5 |
| 7 | 3 | **4/5/6 - Gestione Udienza Monocratica** | 6d | 2014-06-12 | 2014-06-19 | 3 |
| 8 | 3.1 | UC.11.4.1 Inserimento Udienza Monocratica | 2d | 2014-06-12 | 2014-06-13 |  |
| 9 | 3.2 | UC.11.5.1 Modifica Udienza Monocratica | 2d | 2014-06-16 | 2014-06-17 | 8 |
| 10 | 3.3 | UC.11.6.1 Dettaglio Udienza Monocratica | 2d | 2014-06-18 | 2014-06-19 | 9 |
| 11 | 4 | **7/8/9.1 - Gestione Udienza Collegiale - Corte Appello E Tribunale** | 6d | 2014-06-20 | 2014-06-27 | 7 |
| 12 | 4.1 | UC.11.7.1 Inserimento Udienza Collegiale ufficio Corte Appello e Tribunale | 2d | 2014-06-20 | 2014-06-23 |  |
| 13 | 4.2 | UC.11.8.1 Modifica Udienza Collegiale ufficio Corte Appello e Tribunale | 2d | 2014-06-24 | 2014-06-25 | 12 |
| 14 | 4.3 | UC.11.9.1 Cancellazione Udienza Collegiale ufficio Corte Appello e Tribunale | 2d | 2014-06-26 | 2014-06-27 | 13 |
| 15 | 5 | **7/8/9.2 - Gestione Udienza Collegiale - Gup Tribunale Minorenni** | 6d | 2014-06-30 | 2014-07-07 | 11 |
| 16 | 5.1 | UC.11.7.2 Inserimento Udienza Collegiale ufficio GUP Tribunale Minorenni | 2d | 2014-06-30 | 2014-07-01 |  |
| 17 | 5.2 | UC.11.8.2 Modifica Udienza Collegiale ufficio GUP Tribunale Minorenni | 2d | 2014-07-02 | 2014-07-03 | 16 |
| 18 | 5.3 | UC.11.9.2 Cancellazione Udienza Collegiale | 2d | 2014-07-04 | 2014-07-07 | 17 |
| 19 | 6 | **7/8.3 - Gestione Udienza Collegiale - Tribunale Dei Minorenni** | 4d | 2014-07-08 | 2014-07-11 | 15 |
| 20 | 6.1 | UC.11.7.3 Inserimento Udienza Collegiale ufficio Tribunale dei Minorenni | 2d | 2014-07-08 | 2014-07-09 |  |
| 21 | 6.2 | UC.11.8.3 Modifica Udienza Collegiale ufficio Tribunale dei Minorenni | 2d | 2014-07-10 | 2014-07-11 | 20 |
| 22 | 7 | **7/8.4 - Gestione Udienza Collegiale - Corte Di Assise E Corte Di Assise Appello** | 4d | 2014-07-14 | 2014-07-17 | 19 |
| 23 | 7.1 | UC.11.7.4 Inserimento Udienza Collegiale ufficio Corte di Assise e Corte di Assise Appello | 2d | 2014-07-14 | 2014-07-15 |  |
| 24 | 7.2 | UC.11.8.4 Modifica Udienza Collegiale ufficio Corte di Assise e Corte di Assise Appello | 2d | 2014-07-16 | 2014-07-17 | 23 |

| ID | WBS | Task | Duration | Start | Finish | Predecessors |
| --- | --- | --- | --- | --- | --- | --- |
| 25 | 8 | **7/8.5 - Gestione Udienza Collegiale - Sezione Minorenni Corte Di Appello** | 4d | 2014-07-18 | 2014-07-23 | 22 |
| 26 | 8.1 | UC.11.7.5 Inserimento Udienza Collegiale ufficio Sezione Minorenni Corte di Appello | 2d | 2014-07-18 | 2014-07-21 |  |
| 27 | 8.2 | UC.11.8.5 Modifica Udienza Collegiale ufficio Sezione Minorenni Corte di Appello | 2d | 2014-07-22 | 2014-07-23 | 26 |
| 28 | 9 | **Gestione Persone Fisiche/Giuridiche Offese** | 5d | 2014-07-24 | 2014-07-30 | 25 |
| 29 | 9.1 | UC.11.11.1 Inserimento persone fisiche offese | 1d | 2014-07-24 | 2014-07-24 |  |
| 30 | 9.2 | UC.11.12.1 Inserimento persone giuridiche offese | 1d | 2014-07-25 | 2014-07-25 | 29 |
| 31 | 9.3 | UC.11.14.1 Modifica persone fisiche offese | 1d | 2014-07-28 | 2014-07-28 | 30 |
| 32 | 9.4 | UC.11.15.1 Modifica persone giuridiche offese | 1d | 2014-07-29 | 2014-07-29 | 31 |
| 33 | 9.5 | UC.11.13.1 Gestione persone offese | 1d | 2014-07-30 | 2014-07-30 | 32 |
